# 固定资产信息系统项目

Schedule from MS Project, 2005-08-08 to 2006-06-22, status date 2005-10-05.
surfways

## Calendars

- 标准: Mon-Fri 08:00-12:00, 13:00-17:00; Sat-Sun off.

## Resources

| Resource |
| --- |
| 张杰 |
| 杨阳 |
| 冯哲 |
| 郭毅 |
| 郝蕊 |
| 李浩 |
| 刘刚 |
| 刘丽 |
| 申华 |
| 宋江 |
| 王力锋 |
| 王工 |

## Schedule

| ID | WBS | Task | Type | Duration | Start | Finish | Predecessors | Baseline start | Baseline finish | Baseline duration | Total slack | Free slack | Constraint | Deadline | Resources | Work | Baseline cost |
| --- | --- | --- | --- | --- | --- | --- | --- | --- | --- | --- | --- | --- | --- | --- | --- | --- | --- |
| 1 | 1 | **固定资产信息系统项目** |  | 229d | 2005-08-08 | 2006-06-22 |  | 2005-08-08 | 2006-06-21 | 228d | -2d | 0d |  |  |  | 520h | 50,598 |
| 2 | 1.1 | **需求分析阶段** |  | 41d | 2005-08-08 | 2005-10-03 |  | 2005-08-08 | 2005-09-30 | 40d | -2d | 0d |  |  |  | 304h | 12,024 |
| 3 | 1.1.1 | 系统需求获取 |  | 5d | 2005-08-08 | 2005-08-12 |  | 2005-08-08 | 2005-08-12 | 5d | -2d | 0d |  |  | 冯哲 | 40h | 1,200 |
| 4 | 1.1.2 | 系统需求讨论 |  | 11d | 2005-08-17 | 2005-08-31 | 3FS+2d | 2005-08-17 | 2005-08-30 | 10d | -2d | 0d |  |  | 杨阳 | 88h | 1,200 |
| 5 | 1.1.3 | 需求分析 |  | 8d | 2005-09-01 | 2005-09-12 | 4 | 2005-08-31 | 2005-09-07 | 6d | -2d | 0d |  | 2005-09-08 | 郝蕊 | 64h | 2,640 |
| 6 | 1.1.4 | 编写需求分析说明书 |  | 5d | 2005-09-07 | 2005-09-13 | 5FS-2d | 2005-09-06 | 2005-09-12 | 5d | -2d | 0d | finish no later than 2005-09-13 |  |  |  |  |
| 7 | 1.1.5 | **需求分析确认过程** |  | 14d | 2005-09-14 | 2005-10-03 | 6 | 2005-09-13 | 2005-09-30 | 14d | 0d |  |  |  |  | 112h | 6,984 |
| 8 | 1.1.5.1 | 需求分析书意见采集 |  | 2d | 2005-09-14 | 2005-09-15 |  | 2005-09-13 | 2005-09-14 | 2d | 0d |  |  |  | 杨阳 | 16h | 1,248 |
| 9 | 1.1.5.2 | 需求分析书修改 |  | 5d | 2005-09-16 | 2005-09-22 | 8 | 2005-09-15 | 2005-09-21 | 5d | 0d |  |  |  | 冯哲 | 40h | 3,120 |
| 10 | 1.1.5.3 | 需求分析书第二次意见采集 |  | 3d | 2005-09-23 | 2005-09-27 | 9 | 2005-09-22 | 2005-09-26 | 3d | 0d |  |  |  | 李浩 | 24h | 120 |
| 11 | 1.1.5.4 | 需求分析书第二次修改 |  | 2d | 2005-09-28 | 2005-09-29 | 10 | 2005-09-27 | 2005-09-28 | 2d | 0d |  |  |  | 李浩 | 16h | 1,248 |
| 12 | 1.1.5.5 | 需求分析书第二次确认 |  | 2d | 2005-09-30 | 2005-10-03 | 11 | 2005-09-29 | 2005-09-30 | 2d | 0d |  |  |  | 李浩 | 16h | 1,248 |
| 13 | 1.1.5.6 | 需求分析确认过程结束 | milestone | 0d | 2005-10-03 | 2005-10-03 | 12 | 2005-09-30 | 2005-09-30 | 0d | 0d |  |  |  | 刘丽 |  |  |
| 14 | 1.1.6 | 需求分析阶段结束 | milestone | 0d | 2005-10-03 | 2005-10-03 | 13 | 2005-09-30 | 2005-09-30 | 0d | 0d |  |  |  |  |  |  |
| 15 | 1.2 | **原型开发阶段** |  | 40d | 2005-10-04 | 2005-11-28 | 14 | 2005-10-03 | 2005-11-25 | 40d | 0d |  |  |  |  | 216h | 4,094 |
| 16 | 1.2.1 | 原型设计 |  | 10d | 2005-10-04 | 2005-10-17 |  | 2005-10-03 | 2005-10-14 | 10d | 0d |  |  |  | 李浩 | 80h | 1,200 |
| 17 | 1.2.2 | 原型开发 |  | 15d | 2005-10-18 | 2005-11-07 | 16 | 2005-10-17 | 2005-11-04 | 15d | 0d |  |  |  | 李浩 | 120h | 30 |
| 18 | 1.2.3 | 原型演示 |  | 2d | 2005-11-08 | 2005-11-09 | 17 | 2005-11-07 | 2005-11-08 | 2d | 0d |  |  |  | 杨阳 | 16h | 320 |
| 19 | 1.2.4 | 原型修改 |  | 4d | 2005-11-10 | 2005-11-15 | 18 | 2005-11-09 | 2005-11-14 | 4d | 0d |  |  |  |  |  | 1,920 |
| 20 | 1.2.5 | 原型再次确认 |  | 2d | 2005-11-16 | 2005-11-17 | 19 | 2005-11-15 | 2005-11-16 | 2d | 0d |  |  |  |  |  | 320 |
| 21 | 1.2.6 | 原型修改 |  | 6d | 2005-11-18 | 2005-11-25 | 20 | 2005-11-17 | 2005-11-24 | 6d | 0d |  |  |  |  |  | 240 |
| 22 | 1.2.7 | 原型最后确认 |  | 1d | 2005-11-28 | 2005-11-28 | 21 | 2005-11-25 | 2005-11-25 | 1d | 0d |  |  |  |  |  | 64 |
| 23 | 1.2.8 | 原型开发阶段结束 | milestone | 0d | 2005-11-28 | 2005-11-28 | 22 | 2005-11-25 | 2005-11-25 | 0d | 0d |  |  |  |  |  |  |
| 24 | 1.3 | **系统设计阶段** |  | 44d | 2005-11-29 | 2006-01-27 | 23 | 2005-11-28 | 2006-01-26 | 44d | 0d |  |  |  |  |  | 6,080 |
| 25 | 1.3.1 | 概要设计 |  | 10d | 2005-11-29 | 2005-12-12 |  | 2005-11-28 | 2005-12-09 | 10d | 0d |  |  |  |  |  | 640 |
| 26 | 1.3.2 | 详细设计 |  | 20d | 2005-12-13 | 2006-01-09 | 25 | 2005-12-12 | 2006-01-06 | 20d | 0d |  |  |  |  |  | 3,200 |
| 27 | 1.3.3 | 设计评审 |  | 3d | 2006-01-10 | 2006-01-12 | 26 | 2006-01-09 | 2006-01-11 | 3d | 0d |  |  |  |  |  | 480 |
| 28 | 1.3.4 | 设计修改 |  | 8d | 2006-01-13 | 2006-01-24 | 27 | 2006-01-12 | 2006-01-23 | 8d | 0d |  |  |  |  |  | 1,280 |
| 29 | 1.3.5 | 设计确认 |  | 3d | 2006-01-25 | 2006-01-27 | 28 | 2006-01-24 | 2006-01-26 | 3d | 0d |  |  |  |  |  | 480 |
| 30 | 1.3.6 | 系统设计阶段结束 | milestone | 0d | 2006-01-27 | 2006-01-27 | 29 | 2006-01-26 | 2006-01-26 | 0d | 0d |  |  |  |  |  |  |

| ID | WBS | Task | Type | Duration | Start | Finish | Predecessors | Baseline start | Baseline finish | Baseline duration | Total slack | Constraint | Baseline cost |
| --- | --- | --- | --- | --- | --- | --- | --- | --- | --- | --- | --- | --- | --- |
| 31 | 1.4 | **系统编码阶段** |  | 34d | 2006-01-30 | 2006-03-16 | 30 | 2006-01-27 | 2006-03-15 | 34d | 0d |  | 11,600 |
| 32 | 1.4.1 | 编码规范确认 |  | 3d | 2006-01-30 | 2006-02-01 |  | 2006-01-27 | 2006-01-31 | 3d | 0d |  | 1,440 |
| 33 | 1.4.2 | 模块划分 |  | 1d | 2006-02-02 | 2006-02-02 | 32 | 2006-02-01 | 2006-02-01 | 1d | 0d |  | 160 |
| 34 | 1.4.3 | 模块1编写 |  | 15d | 2006-02-03 | 2006-02-23 | 33 | 2006-02-02 | 2006-02-22 | 15d | 15d |  | 2,400 |
| 35 | 1.4.4 | 模块2编写 |  | 30d | 2006-02-03 | 2006-03-16 | 33 | 2006-02-02 | 2006-03-15 | 30d | 0d |  | 2,400 |
| 36 | 1.4.5 | 模块3编写 |  | 20d | 2006-02-03 | 2006-03-02 | 33 | 2006-02-02 | 2006-03-01 | 20d | 10d |  | 2,400 |
| 37 | 1.4.6 | 模块4编写 |  | 10d | 2006-02-03 | 2006-02-16 | 33 | 2006-02-02 | 2006-02-15 | 10d | 20d |  | 2,400 |
| 38 | 1.4.7 | 其他模块编写 |  | 5d | 2006-02-03 | 2006-02-09 | 33 | 2006-02-02 | 2006-02-08 | 5d | 25d | start no earlier than 2006-01-29 | 400 |
| 39 | 1.4.8 | 系统编码阶段结束 | milestone | 0d | 2006-03-16 | 2006-03-16 | 34, 35, 36, 37, 38 | 2006-03-15 | 2006-03-15 | 0d | 0d |  |  |
| 40 | 1.5 | **系统测试阶段** |  | 40d | 2006-03-17 | 2006-05-11 | 39 | 2006-03-16 | 2006-05-10 | 40d | 0d |  | 4,800 |
| 41 | 1.5.1 | 功能测试 |  | 10d | 2006-03-17 | 2006-03-30 |  | 2006-03-16 | 2006-03-29 | 10d | 0d |  | 1,200 |
| 42 | 1.5.2 | 单元测试 |  | 10d | 2006-03-31 | 2006-04-13 | 41 | 2006-03-30 | 2006-04-12 | 10d | 0d |  | 1,600 |
| 43 | 1.5.3 | 集成测试 |  | 10d | 2006-04-14 | 2006-04-27 | 42 | 2006-04-13 | 2006-04-26 | 10d | 0d |  | 1,600 |
| 44 | 1.5.4 | 性能测试 |  | 10d | 2006-04-28 | 2006-05-11 | 43 | 2006-04-27 | 2006-05-10 | 10d | 0d |  | 400 |
| 45 | 1.6 | 系统试运行阶段 |  | 30d | 2006-05-12 | 2006-06-22 | 44 | 2006-05-11 | 2006-06-21 | 30d | 0d |  | 12,000 |
| 46 | 1.3.4 | 系统联调测试 |  | 30d | 2006-05-12 | 2006-06-22 | 45SS | 2006-05-11 | 2006-06-21 | 30d | 0d |  |  |
| 47 | 1.8 | 项目结束 | milestone | 0d | 2006-06-22 | 2006-06-22 | 45 | 2006-06-21 | 2006-06-21 | 0d | 0d |  |  |
